# TH_Module_01_Bai_3

Schedule from MS Project, 2022-11-07 to 2025-01-21, status date 2024-09-09, costs in $, A marks actual dates.

## Calendars

- Standard: Mon-Fri 08:00-12:00, 13:00-17:00; Sat-Sun off.

## Resources

| Resource | Group | Unit | Rate |
| --- | --- | --- | --- |
| Architect | Consultant |  | 9 |
| Draftsperson | Staff |  | 7 |
| Building Clerk | Staff |  | 8 |
| Supervisor | Staff |  | 12 |
| Rigger | Wages |  | 5 |
| Boilermaker | Wages |  | 5 |
| Welder | Wages |  | 6 |
| Carpenter | Wages |  | 7 |
| Painter | Wages |  | 6 |
| Labourer | Wages |  | 6 |
| Driver | Wages |  | 8 |
| No Barrier Fencing | Contractor |  | 3 |
| Rock Solid Concrete | Contractor |  | 4 |
| Listen Ear Audio | Contractor |  | 5 |
| In Focus Video | Contractor |  | 5 |
| Pure Grass Turf | Contractor |  | 5 |
| Building Inspector | Government |  | 5 |
| High Jib Crane | Equipment |  | 7 |
| Grader | Equipment |  | 6 |
| Air Compressor | Equipment |  | 7 |
| Utility | Equipment |  | 5 |
| Electrician | Staff |  | 7 |
| Plumber | Staff |  | 5 |
| Astro Turf | Material | Square Matre | 12 |
| Paint | Ute | Ultre | 20 |
| Tax |  |  |  |
| Bonus |  |  |  |
| Part Time Fee |  |  |  |
| Logistic Cost |  |  |  |

## Schedule

| ID | WBS | Task | Type | Duration | Start | Finish | Predecessors | Complete | Remaining | Total slack | Free slack | Constraint | Resources | Work | Actual work | Cost | Actual cost | At End Of phrases | Dependencies |
| --- | --- | --- | --- | --- | --- | --- | --- | --- | --- | --- | --- | --- | --- | --- | --- | --- | --- | --- | --- |
| 1 | 1 | **Planning** |  | 88d | 2022-11-07 A | 2023-03-08 A |  | 100% |  |  |  |  |  | 648h | 648h | 5,500 | 5,500 |  |  |
| 2 | 1.1 | Creating architechtural plans |  | 12w | 2022-11-07 A | 2023-01-27 A |  | 100% |  |  |  |  | Architect; Building Clerk [25%]; Draftsperson [200%] | 360h | 360h | 2,880 | 2,880 |  |  |
| 3 | 1.2 | Submit plans for approval |  | 1mo | 2023-01-30 A | 2023-02-24 A | 2 | 100% |  |  |  |  | Architect | 160h | 160h | 1,440 | 1,440 |  |  |
| 4 | 1.3 | Order materials |  | 8d | 2023-02-27 A | 2023-03-08 A | 3 | 100% |  |  |  |  | Building Clerk; Draftsperson | 128h | 128h | 960 | 960 |  |  |
| 5 | 1.4 | Planning Completed | milestone | 0d | 2023-03-08 A | 2023-03-08 A | 2, 3, 4 | 100% |  |  |  | finish no earlier than 2023-01-27 | Part Time Fee; Bonus |  |  | 220 | 220 | Planning | 2,3,4 |
| 6 | 2 | **Site Works** |  | 107d | 2023-03-09 A | 2023-08-04 A |  | 100% |  |  |  |  |  | 640h | 640h | 5,672 | 5,672 |  |  |
| 7 | 2.1 | Erect fencing |  | 3d | 2023-03-09 A | 2023-03-13 A | 5 | 100% |  |  |  |  | No Barrier Fencing | 24h | 24h | 72 | 72 |  |  |
| 8 | 2.2 | Erect site building |  | 4d | 2023-03-14 A | 2023-03-17 A | 7 | 100% |  |  |  |  | Carpenter [400%]; Labourer; Supervisor | 96h | 96h | 800 | 800 |  |  |
| 9 | 2.3 | Clear and level site |  | 3w | 2023-03-20 A | 2023-04-07 A | 8 | 100% |  |  |  |  | Driver [200%]; Grader [200%]; Supervisor | 360h | 360h | 3,120 | 3,120 |  |  |
| 10 | 2.4 | Prepare drainage infrastructure |  | 2w | 2023-04-10 A | 2023-04-21 A | 9 | 100% |  |  |  |  | Plumber [200%]; Supervisor [50%] | 80h | 80h | 680 | 680 |  |  |
| 11 | 2.5 | Prepare cabling infrastructure |  | 2w | 2023-04-10 A | 2023-04-21 A | 9 | 100% |  |  |  |  | Electrician [300%]; Supervisor [50%] | 80h | 80h | 760 | 760 |  |  |
| 12 | 2.6 | Site Works Completed |  | 75d | 2023-04-24 A | 2023-08-04 A | 7, 8, 9, 10, 11 | 100% |  |  |  | start no earlier than 2023-01-09 | Logistic Cost [0.1%] |  |  | 240 | 240 | Site works | 7,8,9,10,11 |
| 13 | 3 | **Building Construction** |  | 334d | 2023-08-07 A | 2024-11-14 |  | 83% | 56.31d | 0d |  |  |  | 8472h | 6816h | 59,822 | 46,872 |  |  |
| 14 | 3.1 | Pour foundations |  | 4d | 2023-08-07 A | 2023-08-10 A | 12 | 100% |  |  |  |  | Rock Solid Concrete | 32h | 32h | 128 | 128 |  | 12 |
| 15 | 3.2 | Erect steelwork |  | 6mo | 2023-08-11 A | 2024-01-25 A | 14 | 100% |  |  |  |  | Boilermaker [600%]; Rigger [600%]; Supervisor [50%]; Welder [500%]; Driver [200%]; High Jib Crane; Labourer [600%]; Utility | 3840h | 3840h | 25,920 | 25,920 |  | 14 |
| 16 | 3.3 | Erect wall |  | 8mo | 2024-01-26 A | 2024-09-05 A | 15 | 100% |  |  |  |  | Air Compressor; Carpenter [700%]; Driver; Electrician [75%]; Grader; Labourer [400%]; Plumber [25%]; Supervisor [50%] | 2560h | 2560h | 18,560 | 18,560 |  | 15 |
| 17 | 3.4 | Install roofing superstructure |  | 4w | 2024-09-06 A | 2024-10-03 | 16 | 10% | 3.6w | 0d |  |  | Air Compressor; Boilermaker [500%]; Driver [200%]; High Jib Crane; Labourer [500%]; Plumber [50%]; Rigger [500%]; Supervisor [50%]; Utility; Welder [300%] | 800h | 384h | 5,280 | 2,264 |  | 16 |
| 18 | 3.5 | Install roofing retracting mechanism |  | 2w | 2024-10-04 | 2024-10-17 | 17 |  |  | 0d |  |  | Boilermaker [200%]; Driver; Electrician [200%]; High Jib Crane; Rigger [200%]; Supervisor [50%]; Welder | 280h |  | 2,000 |  |  | 17 |
| 19 | 3.6 | Erect seating tiers |  | 6w | 2024-10-04 | 2024-11-14 | 18SS |  |  | 0d |  |  | Air Compressor; Boilermaker [200%]; Carpenter [800%]; Driver; Labourer [500%]; Supervisor [50%]; Utility; Welder [200%] | 960h |  | 6,720 |  |  | 18SS |
| 20 | 3.7 | Building Construction Completed | milestone | 0d | 2024-11-14 | 2024-11-14 | 14, 15, 16, 17, 18, 19 |  |  | 0d |  | finish no earlier than 2023-01-27 | Logistic Cost; Bonus |  |  | 1,214 |  | Building Construction | 14,15,16,17,18,19 |
| 21 | 4 | **Fit Out** |  | 14d | 2024-11-15 | 2024-12-04 |  |  |  | 0d |  |  |  | 1040h |  | 6,170 |  |  |  |
| 22 | 4.1 | Fit all windows and doors |  | 1w | 2024-11-15 | 2024-11-21 | 20 |  |  | 9d |  |  | Carpenter [500%]; Labourer [200%] | 160h |  | 1,040 |  |  | 20 |
| 23 | 4.2 | Install electrical cabling |  | 0.5w | 2024-11-15 | 2024-11-19 | 20 |  |  | 3.5d | 0d |  | Electrician [300%]; Labourer [200%] | 80h |  | 520 |  |  | 20 |
| 24 | 4.3 | Install electrical fittings and fixtures |  | 0.67w | 2024-11-19 | 2024-11-22 | 23 |  |  | 8.17d |  |  | Electrician [300%] | 80h |  | 560 |  |  | 23 |
| 25 | 4.4 | Install all plumbing |  | 1w | 2024-11-15 | 2024-11-21 | 20 |  |  | 6.5d | 0d |  | Labourer [200%]; Plumber [200%] | 160h |  | 880 |  |  | 20 |
| 26 | 4.5 | Install plumbing fixtures and fittings |  | 0.5w | 2024-11-22 | 2024-11-26 | 25 |  |  | 6.5d |  |  | Plumber [200%] | 40h |  | 200 |  |  | 25 |
| 27 | 4.6 | Lay astro turf |  | 1w | 2024-11-15 | 2024-11-21 | 20 |  |  | 9d |  |  | Pure Grass Turf | 40h |  | 200 |  |  | 20 |
| 28 | 4.7 | Erect handrails and fencing |  | 1w | 2024-11-15 | 2024-11-21 | 20 |  |  | 0d |  |  | Boilermaker [200%]; Welder [400%] | 160h |  | 880 |  |  | 20 |
| 29 | 4.8 | Paint rooms, fixtures, fittings, etc. |  | 0.2mo | 2024-11-22 | 2024-11-27 | 28 |  |  | 0d |  |  | Painter [500%] | 160h |  | 960 |  |  | 28 |
| 30 | 4.9 | Install PA system |  | 2d | 2024-11-19 | 2024-11-21 | 23 |  |  | 4.5d |  |  | Listen Ear Audio | 16h |  | 80 |  |  | 23 |
| 31 | 4.10 | Install video imaging equipment |  | 3d | 2024-11-19 | 2024-11-22 | 23 |  |  | 3.5d |  |  | In Focus Video | 24h |  | 120 |  |  | 23 |
| 32 | 4.11 | Fit out control room |  | 1w | 2024-11-28 | 2024-12-04 | 29, 30, 31 |  |  | 0d |  |  | Electrician [200%]; In Focus Video; Listen Ear Audio | 120h |  | 680 |  |  | 29,30,31 |
| 33 | 4.12 | Fit Out Completed | milestone | 0d | 2024-12-04 | 2024-12-04 | 22, 23, 24, 25, 26, 27, 28, 29, 30, 31, 32 |  |  | 0d |  | finish no earlier than 2023-01-27 | Tax |  |  | 50 |  | Fit out | 22,23,24,25,26,27,28,29,30,31,32 |

| ID | WBS | Task | Duration | Start | Finish | Predecessors | Total slack | Resources | Work | Cost | Dependencies |
| --- | --- | --- | --- | --- | --- | --- | --- | --- | --- | --- | --- |
| 34 | 5 | **Commissioning** | 33.5d | 2024-12-05 | 2025-01-21 |  | 0d |  | 400h | 3,340 |  |
| 35 | 5.1 | Test roof mechanism | 1w | 2024-12-05 | 2024-12-11 | 33 | 0d | Electrician [200%]; Rigger; Supervisor | 120h | 960 | 33 |
| 36 | 5.2 | Test PA system | 2d | 2024-12-05 | 2024-12-06 | 33 | 3d | Listen Ear Audio | 16h | 80 | 33 |
| 37 | 5.3 | Test video imaging equipment | 2d | 2024-12-05 | 2024-12-06 | 33 | 3d | In Focus Video | 16h | 80 | 33 |
| 38 | 5.4 | Test control room equipment | 5w | 2024-12-12 | 2025-01-15 | 35, 36, 37 | 0d | Architect; Electrician [200%]; In Focus Video [20%]; Listen Ear Audio [20%]; Supervisor | 200h | 1,520 | 35,36,37 |
| 39 | 5.5 | Obtain official occupancy | 1d | 2025-01-16 | 2025-01-16 | 38 | 0d | Architect; Building Clerk; Supervisor | 24h | 232 | 38 |
| 40 | 5.6 | Obtain safety certification | 2d | 2025-01-17 | 2025-01-20 | 39 | 0d | Supervisor | 16h | 192 | 39 |
| 41 | 5.7 | Official opening | 0.5d | 2025-01-21 | 2025-01-21 | 40 | 0d | Supervisor [200%] | 8h | 96 | 40 |
